# Proyecto-L1.14

Schedule from MS Project, 2024-10-02 to 2024-12-11, status date 2024-11-07, costs in €, A marks actual dates.

## Calendars

- Calendario-Sevilla: Mon-Fri 09:00-13:00, 15:00-19:00; Sat-Sun off. Exceptions (off unless hours are given): 2024-11-01 (Festividad Todos los Santos), 2024-12-06 (Festividad Día de la Constitución), 2024-12-09 (Festividad Inmaculada Concepción).

## Resources

| Resource | Rate | Cost per use |
| --- | --- | --- |
| Pablo Jesús Castellanos Compaña | 29.67 |  |
| Fernando José de Celis Hurtado | 29.67 |  |
| David Godoy Fernández | 29.67 |  |
| Pedro Jiménez Guerrero | 29.67 |  |
| Germán Ojeda Garrido | 29.67 |  |
| Ordenador |  | 2000 |

## Schedule

| ID | WBS | Task | Type | Duration | Start | Finish | Predecessors | Complete | Remaining | Baseline 1 start | Baseline 1 finish | Total slack | Resources | Work | Actual work | Cost | Actual cost |
| --- | --- | --- | --- | --- | --- | --- | --- | --- | --- | --- | --- | --- | --- | --- | --- | --- | --- |
| 1 | 1 | **Proyecto** |  | 48d | 2024-10-02 A | 2024-12-11 |  | 16% | 40.41d | 2024-10-02 | 2024-12-11 | 0d |  | 312.5h | 102h | 7,236.76 | 3,026.34 |
| 2 | 1.1 | **Planificación** |  | 28d | 2024-10-02 A | 2024-11-11 |  | 89% | 3d | 2024-10-02 | 2024-11-11 | 0d |  | 107h | 102h | 3,174.69 | 3,026.34 |
| 3 | 1.1.1 | Elaboración de documentos | manual | 23d | 2024-10-02 A | 2024-11-04 A |  | 100% |  | 2024-10-02 | 2024-11-04 |  | Pablo Jesús Castellanos Compaña; Fernando José de Celis Hurtado; David Godoy Fernández; Germán Ojeda Garrido; Pedro Jiménez Guerrero | 96h | 96h | 2,848.32 | 2,848.32 |
| 4 | 1.1.2 | Validación de documentos | manual | 3d | 2024-11-05 A | 2024-11-07 | 3 | 67% | 1d | 2024-11-05 | 2024-11-06 |  | Pablo Jesús Castellanos Compaña; Fernando José de Celis Hurtado; David Godoy Fernández; Germán Ojeda Garrido; Pedro Jiménez Guerrero | 7h | 6h | 207.69 | 178.02 |
| 5 | 1.1.3 | Formacion del equipo | manual | 2d | 2024-11-09 | 2024-11-11 | 4 |  |  | 2024-11-09 | 2024-11-11 |  | Pablo Jesús Castellanos Compaña; Fernando José de Celis Hurtado; David Godoy Fernández; Germán Ojeda Garrido; Pedro Jiménez Guerrero | 4h |  | 118.68 |  |
| 6 | 1.2 | **Ejecución** |  | 17d | 2024-11-13 | 2024-12-06 | 2 |  |  | 2024-11-13 | 2024-12-06 | 0d | Ordenador | 195h |  | 3,750.53 |  |
| 7 | 1.2.1 | Inicio ejecución | milestone, manual | 0d | 2024-11-13 | 2024-11-13 |  |  |  | 2024-11-13 | 2024-11-13 |  | Pablo Jesús Castellanos Compaña; Fernando José de Celis Hurtado; David Godoy Fernández; Germán Ojeda Garrido; Pedro Jiménez Guerrero |  |  |  |  |
| 8 | 1.2.2 | Diagrama UML | manual | 1d | 2024-11-13 | 2024-11-13 | 7 |  |  | 2024-11-13 | 2024-11-13 |  | Pablo Jesús Castellanos Compaña; Fernando José de Celis Hurtado; David Godoy Fernández; Germán Ojeda Garrido; Pedro Jiménez Guerrero | 2h |  | 59.34 |  |
| 9 | 1.2.3 | **Backend** |  | 5d | 2024-11-14 | 2024-11-20 | 2 |  |  | 2024-11-14 | 2024-11-20 |  |  | 20h |  | 593.4 |  |
| 10 | 1.2.3.1 | Creación y relleno de la BBDD | manual | 6d | 2024-11-13 | 2024-11-20 | 8 |  |  | 2024-11-13 | 2024-11-20 |  | Pablo Jesús Castellanos Compaña; Fernando José de Celis Hurtado; David Godoy Fernández; Germán Ojeda Garrido; Pedro Jiménez Guerrero | 6h |  | 178.02 |  |
| 11 | 1.2.3.2 | Conexión con frontend | manual | 6d | 2024-11-13 | 2024-11-20 | 8 |  |  | 2024-11-13 | 2024-11-20 |  | Pablo Jesús Castellanos Compaña; Fernando José de Celis Hurtado; David Godoy Fernández; Germán Ojeda Garrido; Pedro Jiménez Guerrero | 2h |  | 59.34 |  |
| 12 | 1.2.3.3 | Realizar funcionalidades descritas en requisitos | manual | 6d | 2024-11-13 | 2024-11-20 | 8 |  |  | 2024-11-13 | 2024-11-20 |  | Pablo Jesús Castellanos Compaña; Fernando José de Celis Hurtado; David Godoy Fernández; Germán Ojeda Garrido; Pedro Jiménez Guerrero | 12h |  | 356.04 |  |
| 13 | 1.2.4 | **Frontend** |  | 12d | 2024-11-20 | 2024-12-06 | 2, 9 |  |  | 2024-11-20 | 2024-12-06 | 0d |  | 25h |  | 741.75 |  |
| 14 | 1.2.4.1 | Realizar mockups de la interfaz | manual | 2d | 2024-11-20 | 2024-11-21 |  |  |  | 2024-11-20 | 2024-11-21 |  | Pablo Jesús Castellanos Compaña; Fernando José de Celis Hurtado; David Godoy Fernández; Germán Ojeda Garrido; Pedro Jiménez Guerrero | 6h |  | 178.02 |  |
| 15 | 1.2.4.2 | Creación del Login y nueva cuenta | manual | 12d | 2024-11-21 | 2024-12-06 | 14 |  |  | 2024-11-21 | 2024-12-06 |  | Pablo Jesús Castellanos Compaña; Fernando José de Celis Hurtado; David Godoy Fernández; Germán Ojeda Garrido; Pedro Jiménez Guerrero | 8h |  | 237.36 |  |
| 16 | 1.2.4.3 | Página de inicio | manual | 12d | 2024-11-21 | 2024-12-06 | 14 |  |  | 2024-11-21 | 2024-12-06 |  | Pablo Jesús Castellanos Compaña; Fernando José de Celis Hurtado; David Godoy Fernández; Germán Ojeda Garrido; Pedro Jiménez Guerrero | 2h |  | 59.34 |  |
| 17 | 1.2.4.4 | Página de detalles de cada producto | manual | 12d | 2024-11-21 | 2024-12-06 | 14 |  |  | 2024-11-21 | 2024-12-06 |  | Pablo Jesús Castellanos Compaña; Fernando José de Celis Hurtado; David Godoy Fernández; Germán Ojeda Garrido; Pedro Jiménez Guerrero | 3h |  | 89.01 |  |
| 18 | 1.2.4.5 | Cesta de la compra | manual | 12d | 2024-11-21 | 2024-12-06 | 14 |  |  | 2024-11-21 | 2024-12-06 |  | Pablo Jesús Castellanos Compaña; Fernando José de Celis Hurtado; David Godoy Fernández; Germán Ojeda Garrido; Pedro Jiménez Guerrero | 2h |  | 59.34 |  |
| 19 | 1.2.4.6 | Sistema de pago | manual | 12d | 2024-11-21 | 2024-12-06 | 14 |  |  | 2024-11-21 | 2024-12-06 |  | Pablo Jesús Castellanos Compaña; Fernando José de Celis Hurtado; David Godoy Fernández; Germán Ojeda Garrido; Pedro Jiménez Guerrero | 4h |  | 118.68 |  |
| 20 | 1.2.5 | **Tareas complementarias** |  | 17d | 2024-11-13 | 2024-12-06 | 2 |  |  | 2024-11-13 | 2024-12-06 | 0d |  | 12h |  | 356.04 |  |
| 21 | 1.2.5.1 | Informes de seguimiento | manual | 18d | 2024-11-13 | 2024-12-06 |  |  |  | 2024-11-13 | 2024-12-06 |  | Pablo Jesús Castellanos Compaña; Fernando José de Celis Hurtado; David Godoy Fernández; Germán Ojeda Garrido; Pedro Jiménez Guerrero | 4h |  | 118.68 |  |
| 22 | 1.2.5.2 | Actividades de calidad | manual | 18d | 2024-11-13 | 2024-12-06 |  |  |  | 2024-11-13 | 2024-12-06 |  | Pablo Jesús Castellanos Compaña; Fernando José de Celis Hurtado; David Godoy Fernández; Germán Ojeda Garrido; Pedro Jiménez Guerrero | 8h |  | 237.36 |  |
| 23 | 1.3 | **Cierre** |  | 2d | 2024-12-06 | 2024-12-11 | 9, 13, 20 |  |  | 2024-12-06 | 2024-12-11 | 0d |  | 10.5h |  | 311.54 |  |
| 24 | 1.3.1 | Despliegue de la aplicación | manual | 2d | 2024-12-06 | 2024-12-07 |  |  |  | 2024-12-06 | 2024-12-07 |  | Pablo Jesús Castellanos Compaña; Fernando José de Celis Hurtado; David Godoy Fernández; Germán Ojeda Garrido; Pedro Jiménez Guerrero | 2h |  | 59.34 |  |
| 25 | 1.3.2 | Informe de cierre | manual | 2d | 2024-12-06 | 2024-12-07 |  |  |  | 2024-12-06 | 2024-12-07 |  | Pablo Jesús Castellanos Compaña; Fernando José de Celis Hurtado; David Godoy Fernández; Germán Ojeda Garrido; Pedro Jiménez Guerrero | 3h |  | 89.01 |  |
| 26 | 1.3.3 | Presentación final del producto | manual | 2d | 2024-12-07 | 2024-12-08 | 25 |  |  | 2024-12-07 | 2024-12-08 |  | Pablo Jesús Castellanos Compaña; Fernando José de Celis Hurtado; David Godoy Fernández; Germán Ojeda Garrido; Pedro Jiménez Guerrero | 1.5h |  | 44.51 |  |
| 27 | 1.3.4 | Entrega del producto | manual | 1d | 2024-12-08 | 2024-12-08 |  |  |  | 2024-12-08 | 2024-12-08 |  | Pablo Jesús Castellanos Compaña; Fernando José de Celis Hurtado; David Godoy Fernández; Germán Ojeda Garrido; Pedro Jiménez Guerrero | 1h |  | 29.67 |  |
| 28 | 1.3.5 | Validación del cliente | manual | 3d | 2024-12-09 | 2024-12-11 | 26, 27 |  |  | 2024-12-09 | 2024-12-11 |  | Pablo Jesús Castellanos Compaña; Fernando José de Celis Hurtado; David Godoy Fernández; Germán Ojeda Garrido; Pedro Jiménez Guerrero | 2h |  | 59.34 |  |
| 29 | 1.3.6 | Formación del cliente | manual | 3d | 2024-12-09 | 2024-12-11 | 26, 27 |  |  | 2024-12-09 | 2024-12-11 |  | Pablo Jesús Castellanos Compaña; Fernando José de Celis Hurtado; David Godoy Fernández; Germán Ojeda Garrido; Pedro Jiménez Guerrero | 1h |  | 29.67 |  |
| 30 | 1.3.7 | Cierre del proyecto | milestone, manual | 0d | 2024-12-09 | 2024-12-09 | 28, 29 |  |  | 2024-12-09 | 2024-12-09 |  | Pablo Jesús Castellanos Compaña; Fernando José de Celis Hurtado; David Godoy Fernández; Germán Ojeda Garrido; Pedro Jiménez Guerrero |  |  |  |  |
